# 软工实验项目

Schedule from MS Project, 2017-03-10 to 2017-06-24, A marks actual dates.

## Calendars

- 标准: Mon-Fri 08:00-12:00, 13:00-17:00; Sat-Sun off.

## Resources

| Resource |
| --- |
| 陈伟民 |
| 付强 |
| 李恬霖 |
| 曹进 |

## Schedule

| ID | WBS | Task | Type | Duration | Start | Finish | Predecessors | Complete | Actual finish | Baseline start | Baseline finish | Baseline duration | Baseline 1 start | Baseline 1 finish | Resources | Work | Actual work |
| --- | --- | --- | --- | --- | --- | --- | --- | --- | --- | --- | --- | --- | --- | --- | --- | --- | --- |
| 1 | 1 | **上课** |  | 1d | 2017-03-10 A | 2017-03-10 A |  | 100% |  | 2017-03-10 | 2017-03-10 | 1d | 2017-03-10 | 2017-03-10 |  | 8h | 8h |
| 2 | 1.1 | 组队 | manual | 1d | 2017-03-10 A | 2017-03-10 A |  | 100% |  | 2017-03-10 | 2017-03-10 | 1d | 2017-03-10 | 2017-03-10 | 曹进 [10%]; 陈伟民 [10%]; 付强 [10%]; 李恬霖 [10%] | 3.2h | 3.2h |
| 3 | 1.2 | 分配任务，调研项目 | manual | 1d | 2017-03-10 A | 2017-03-10 A |  | 100% |  | 2017-03-10 | 2017-03-10 | 1d | 2017-03-10 | 2017-03-10 | 曹进 [15%]; 陈伟民 [15%]; 付强 [15%]; 李恬霖 [15%] | 4.8h | 4.8h |
| 4 | 2 | **项目计划书拟定实验** |  | 6d | 2017-03-12 A | 2017-03-20 A |  | 100% |  | 2017-03-12 | 2017-03-20 | 6d | 2017-03-12 | 2017-03-17 |  | 80.96h | 80.96h |
| 5 | 2.1 | **项目确定以及介绍** |  | 2d | 2017-03-12 A | 2017-03-13 A | 3 | 100% |  | 2017-03-12 | 2017-03-13 | 2d | 2017-03-12 | 2017-03-13 |  | 40h | 40h |
| 6 | 2.1.1 | **项目调研** |  | 2d | 2017-03-12 A | 2017-03-13 A | 3 | 100% |  | 2017-03-12 | 2017-03-13 | 2d | 2017-03-12 | 2017-03-13 |  | 32h | 32h |
| 7 | 2.1.1.1 | 调研Torch平台 | manual | 2d | 2017-03-12 A | 2017-03-13 A |  | 100% |  | 2017-03-12 | 2017-03-13 | 2d | 2017-03-12 | 2017-03-13 | 陈伟民 [50%] | 8h | 8h |
| 8 | 2.1.1.2 | 调研node.js | manual | 2d | 2017-03-12 A | 2017-03-13 A |  | 100% |  | 2017-03-12 | 2017-03-13 | 2d | 2017-03-12 | 2017-03-13 | 李恬霖 [50%] | 8h | 8h |
| 9 | 2.1.1.3 | 学习github及软件安装 | manual | 2d | 2017-03-12 A | 2017-03-13 A |  | 100% |  | 2017-03-12 | 2017-03-13 | 2d | 2017-03-12 | 2017-03-13 | 付强 [50%] | 8h | 8h |
| 10 | 2.1.1.4 | 学习Microsoft Project及软件安装 | manual | 2d | 2017-03-12 A | 2017-03-13 A |  | 100% |  | 2017-03-12 | 2017-03-13 | 2d | 2017-03-12 | 2017-03-13 | 曹进 [50%] | 8h | 8h |
| 11 | 2.1.2 | 选题会议 | manual | 1d | 2017-03-13 A | 2017-03-13 A | 6 | 100% |  | 2017-03-13 | 2017-03-13 | 1d | 2017-03-13 | 2017-03-13 | 曹进 [25%]; 陈伟民 [25%]; 付强 [25%]; 李恬霖 [25%] | 8h | 8h |
| 12 | 2.2 | **项目计划书** |  | 4d | 2017-03-14 A | 2017-03-17 A | 11 | 100% |  | 2017-03-14 | 2017-03-17 | 4d | 2017-03-14 | 2017-03-17 |  | 32h | 32h |
| 13 | 2.2.1 | 撰写引言 | manual | 4d | 2017-03-14 A | 2017-03-17 A |  | 100% |  | 2017-03-14 | 2017-03-17 | 4d | 2017-03-14 | 2017-03-17 | 陈伟民 [25%] | 8h | 8h |
| 14 | 2.2.2 | 项目概述 | manual | 4d | 2017-03-14 A | 2017-03-17 A |  | 100% |  | 2017-03-14 | 2017-03-17 | 4d | 2017-03-14 | 2017-03-17 | 李恬霖 [25%] | 8h | 8h |
| 15 | 2.2.3 | 目的及成果 | manual | 4d | 2017-03-14 A | 2017-03-17 A |  | 100% |  | 2017-03-14 | 2017-03-17 | 4d | 2017-03-14 | 2017-03-17 | 付强 [25%] | 8h | 8h |
| 16 | 2.2.4 | mpp学习与使用 | manual | 4d | 2017-03-14 A | 2017-03-17 A |  | 100% |  | 2017-03-14 | 2017-03-17 | 4d | 2017-03-14 | 2017-04-17 | 曹进 [25%] | 8h | 8h |
| 17 | 2.3 | 上课 | manual | 1d | 2017-03-17 A | 2017-03-17 A |  | 100% |  | 2017-03-17 | 2017-03-17 | 1d | 2017-03-17 | 2017-03-17 | 曹进 [25%]; 陈伟民 [25%]; 付强 [25%]; 李恬霖 [25%] | 8h | 8h |
| 18 | 2.4 | 整理本周工作文档 | manual | 1d | 2017-03-20 A | 2017-03-20 A | 12 | 100% |  | 2017-03-20 | 2017-03-20 | 1d | 2017-03-17 | 2017-03-17 | 李恬霖 [2%] | 0.16h | 0.16h |
| 19 | 2.5 | 制作本周展示ppt | manual | 1d | 2017-03-20 A | 2017-03-20 A | 12 | 100% |  | 2017-03-20 | 2017-03-20 | 1d | 2017-03-17 | 2017-03-17 | 陈伟民 [10%] | 0.8h | 0.8h |
| 20 | 3 | **项目需求编写实验** |  | 5d | 2017-03-20 A | 2017-03-24 A |  | 100% |  | 2017-03-20 | 2017-03-24 | 5d | 2017-03-20 | 2017-03-24 |  | 64.96h | 64.96h |
| 21 | 3.1 | **软件需求分析** |  | 5d | 2017-03-20 A | 2017-03-24 |  | 100% | 2017-03-23 | 2017-03-20 | 2017-03-24 | 5d | 2017-03-20 | 2017-03-24 |  | 56h | 56h |
| 22 | 3.1.1 | 软件模块分析 | manual | 1d | 2017-03-20 A | 2017-03-20 A | 12 | 100% |  | 2017-03-20 | 2017-03-20 | 1d | 2017-03-20 | 2017-03-20 | 曹进 [25%] | 2h | 2h |
| 23 | 3.1.2 | 测试需求分析 | manual | 1d | 2017-03-20 A | 2017-03-20 A | 12 | 100% |  | 2017-03-20 | 2017-03-20 | 1d | 2017-03-20 | 2017-03-20 | 李恬霖 [25%] | 2h | 2h |
| 24 | 3.1.3 | 软工规范分析 | manual | 1d | 2017-03-20 A | 2017-03-20 A | 12 | 100% |  | 2017-03-20 | 2017-03-20 | 1d | 2017-03-20 | 2017-03-20 | 付强 [25%] | 2h | 2h |
| 25 | 3.1.4 | 扩展功能分析 | manual | 1d | 2017-03-20 A | 2017-03-20 A | 12 | 100% |  | 2017-03-20 | 2017-03-20 | 1d | 2017-03-20 | 2017-03-20 | 陈伟民 [25%] | 2h | 2h |
| 26 | 3.1.5 | 每周会议 | manual | 1d | 2017-03-20 A | 2017-03-20 A | 22, 23, 24, 25 | 100% |  | 2017-03-20 | 2017-03-20 | 1d | 2017-03-20 | 2017-03-20 | 曹进 [25%]; 陈伟民 [25%]; 付强 [25%]; 李恬霖 [25%] | 8h | 8h |
| 27 | 3.1.6 | 测试需求分析 | manual | 1d | 2017-03-21 A | 2017-03-21 A | 26 | 100% |  | 2017-03-21 | 2017-03-21 | 1d | 2017-03-20 | 2017-03-20 | 陈伟民 [25%]; 付强 [25%]; 李恬霖 [25%]; 曹进 [25%] | 8h | 8h |
| 28 | 3.1.7 | 软工规范分析 | manual | 1d | 2017-03-21 A | 2017-03-21 A | 26 | 100% |  | 2017-03-21 | 2017-03-21 | 1d | 2017-03-20 | 2017-03-20 | 陈伟民 [25%]; 付强 [25%]; 李恬霖 [25%]; 曹进 [25%] | 8h | 8h |
| 29 | 3.1.8 | 需求分析会议 | manual | 1d | 2017-03-22 A | 2017-03-22 A | 26 | 100% |  | 2017-03-22 | 2017-03-22 | 1d | 2017-03-22 | 2017-03-22 | 陈伟民 [25%]; 付强 [25%]; 李恬霖 [25%]; 曹进 [25%] | 8h | 8h |
| 30 | 3.1.9 | 软件模块分析 | manual | 2d | 2017-03-22 A | 2017-03-23 A | 27, 28, 29 | 100% |  | 2017-03-22 | 2017-03-23 | 2d | 2017-03-22 | 2017-03-23 | 陈伟民 [25%]; 付强 [25%]; 李恬霖 [25%]; 曹进 [25%] | 16h | 16h |
| 31 | 3.2 | 上课 | manual | 1d | 2017-03-24 A | 2017-03-24 A |  | 100% |  | 2017-03-24 | 2017-03-24 | 1d | 2017-03-24 | 2017-03-24 | 曹进 [25%]; 陈伟民 [25%]; 付强 [25%]; 李恬霖 [25%] | 8h | 8h |
| 32 | 3.3 | 整理本周工作文档 | manual | 1d | 2017-03-24 A | 2017-03-24 A |  | 100% |  | 2017-03-24 | 2017-03-24 | 1d | 2017-03-24 | 2017-03-24 | 李恬霖 [2%] | 0.16h | 0.16h |
| 33 | 3.4 | 制作本周展示ppt | manual | 1d | 2017-03-24 A | 2017-03-24 A |  | 100% |  | 2017-03-24 | 2017-03-24 | 1d | 2017-03-24 | 2017-03-24 | 陈伟民 [10%] | 0.8h | 0.8h |

| ID | WBS | Task | Type | Duration | Start | Finish | Complete | Actual start | Actual finish | Baseline start | Baseline finish | Baseline duration | Baseline 1 start | Baseline 1 finish | Resources | Work | Actual work |
| --- | --- | --- | --- | --- | --- | --- | --- | --- | --- | --- | --- | --- | --- | --- | --- | --- | --- |
| 34 | 4 | **项目需求修改** |  | 2d | 2017-03-25 A | 2017-03-26 A | 100% |  |  | 2017-03-25 | 2017-03-26 | 2d | 2017-03-25 | 2017-03-26 |  | 24h | 24h |
| 35 | 4.1 | 修改软件模块需求 | manual | 2d | 2017-03-25 A | 2017-03-26 A | 100% |  |  | 2017-03-25 | 2017-03-26 | 2d | 2017-03-25 | 2017-03-26 | 曹进 [25%]; 陈伟民 [25%]; 付强 [25%]; 李恬霖 [25%] | 16h | 16h |
| 36 | 4.2 | 需求评审会议 | manual | 1d | 2017-03-26 A | 2017-03-26 A | 100% |  |  | 2017-03-26 | 2017-03-26 | 1d | 2017-03-26 | 2017-03-26 | 曹进 [25%]; 陈伟民 [25%]; 付强 [25%]; 李恬霖 [25%] | 8h | 8h |
| 37 | 5 | **项目需求评审实验** |  | 5d | 2017-03-27 A | 2017-03-31 A | 100% |  |  | 2017-03-27 | 2017-03-31 | 5d | 2017-03-27 | 2017-03-31 |  | 48.97h | 48.97h |
| 38 | 5.1 | 内部评审功能需求 | manual | 1d | 2017-03-27 A | 2017-03-27 A | 100% |  |  | 2017-03-27 | 2017-03-27 | 1d | 2017-03-27 | 2017-03-27 | 付强 [25%] | 2h | 2h |
| 39 | 5.2 | 内部评审非功能需求 | manual | 1d | 2017-03-27 A | 2017-03-27 A | 100% |  |  | 2017-03-27 | 2017-03-27 | 1d | 2017-03-27 | 2017-03-27 | 李恬霖 [25%] | 2h | 2h |
| 40 | 5.3 | 内部评审用例图和RUCM | manual | 1d | 2017-03-27 A | 2017-03-27 A | 100% |  |  | 2017-03-27 | 2017-03-27 | 1d | 2017-03-27 | 2017-03-27 | 曹进 [25%] | 2h | 2h |
| 41 | 5.4 | 修改软件需求说明书 | manual | 1d | 2017-03-27 A | 2017-03-27 A | 100% |  |  | 2017-03-27 | 2017-03-27 | 1d | 2017-03-27 | 2017-03-27 | 陈伟民 [25%] | 2h | 2h |
| 42 | 5.5 | 内部评审功能需求 | manual | 1d | 2017-03-28 A | 2017-03-28 A | 100% |  |  | 2017-03-28 | 2017-03-28 | 1d | 2017-03-28 | 2017-03-28 | 付强 [25%] | 2h | 2h |
| 43 | 5.6 | 内部评审非功能需求 | manual | 1d | 2017-03-28 A | 2017-03-28 A | 100% |  |  | 2017-03-28 | 2017-03-28 | 1d | 2017-03-28 | 2017-03-28 | 李恬霖 [25%] | 2h | 2h |
| 44 | 5.7 | 内部评审用例图和RUCM | manual | 1d | 2017-03-28 A | 2017-03-28 A | 100% |  |  | 2017-03-28 | 2017-03-28 | 1d | 2017-03-28 | 2017-03-28 | 曹进 [25%] | 2h | 2h |
| 45 | 5.8 | 修改软件需求说明书 | manual | 1d | 2017-03-28 A | 2017-03-28 A | 100% |  |  | 2017-03-28 | 2017-03-28 | 1d | 2017-03-28 | 2017-03-28 | 陈伟民 [25%] | 2h | 2h |
| 46 | 5.9 | 讨论协商检查单 | manual | 1d | 2017-03-29 A | 2017-03-29 A | 100% |  |  | 2017-03-29 | 2017-03-29 | 1d | 2017-03-29 | 2017-03-29 | 陈伟民 [25%]; 付强 [25%]; 李恬霖 [25%]; 曹进 [25%] | 8h | 8h |
| 47 | 5.10 | 需求分析说明书改进 | manual | 1d | 2017-03-30 A | 2017-03-30 A | 100% |  |  | 2017-03-30 | 2017-03-30 | 1d | 2017-03-30 | 2017-03-30 | 付强 [50%]; 李恬霖 [50%]; 曹进 [50%]; 陈伟民 [50%] | 16h | 16h |
| 48 | 5.11 | 上课 | manual | 1d | 2017-03-31 A | 2017-03-31 A | 100% |  |  | 2017-03-31 | 2017-03-31 | 1d | 2017-03-31 | 2017-03-31 | 陈伟民 [25%]; 付强 [25%]; 李恬霖 [25%]; 曹进 [25%] | 8h | 8h |
| 49 | 5.12 | 整理本周工作文档 | manual | 1d | 2017-03-31 A | 2017-03-31 A | 100% |  |  | 2017-03-31 | 2017-03-31 | 1d | 2017-03-31 | 2017-03-31 | 李恬霖 [2%] | 0.17h | 0.17h |
| 50 | 5.13 | 制作本周展示ppt | manual | 1d | 2017-03-31 A | 2017-03-31 A | 100% |  |  | 2017-03-31 | 2017-03-31 | 1d | 2017-03-31 | 2017-03-31 | 陈伟民 [10%] | 0.8h | 0.8h |
| 51 | 6 | **项目需求修改** |  | 6d | 2017-04-03 | 2017-04-10 A | 100% | 2017-04-05 |  | 2017-04-03 | 2017-04-10 | 6d | 2017-04-03 | 2017-04-10 |  | 80.96h | 80.96h |
| 52 | 6.1 | **修改需求分析说明书** |  | 2d | 2017-04-05 A | 2017-04-06 | 100% |  | 2017-04-05 | 2017-04-05 | 2017-04-06 | 2d | 2017-04-05 | 2017-04-06 |  | 32h | 32h |
| 53 | 6.1.1 | 修改用例图、修改文件读取数据RUCM | manual | 1d | 2017-04-05 A | 2017-04-05 A | 100% |  |  | 2017-04-05 | 2017-04-05 | 1d | 2017-04-05 | 2017-04-05 | 曹进 [25%] | 2h | 2h |
| 54 | 6.1.2 | 修改导入工具包RUCM、修改定义神经网络模型RUCM | manual | 1d | 2017-04-05 A | 2017-04-05 A | 100% |  |  | 2017-04-05 | 2017-04-05 | 1d | 2017-04-05 | 2017-04-05 | 曹进 [25%] | 2h | 2h |
| 55 | 6.1.3 | 修改训练网络RUCM、修改随机生成数据RUCM | manual | 1d | 2017-04-05 A | 2017-04-05 A | 100% |  |  | 2017-04-05 | 2017-04-05 | 1d | 2017-04-05 | 2017-04-05 | 曹进 [25%] | 2h | 2h |
| 56 | 6.1.4 | 修改测试网络RUCM、更新project | manual | 1d | 2017-04-05 A | 2017-04-05 A | 100% |  |  | 2017-04-05 | 2017-04-05 | 1d | 2017-04-05 | 2017-04-05 | 曹进 [25%] | 2h | 2h |
| 57 | 6.1.5 | 增加运行需求、调整非功能性需求及文档格式 | manual | 1d | 2017-04-05 A | 2017-04-05 A | 100% |  |  | 2017-04-05 | 2017-04-05 | 1d | 2017-04-05 | 2017-04-05 | 李恬霖 [50%] | 4h | 4h |
| 58 | 6.1.6 | 修改、调整功能性需求 | manual | 1d | 2017-04-05 A | 2017-04-05 A | 100% |  |  | 2017-04-05 | 2017-04-05 | 1d | 2017-04-05 | 2017-04-05 | 李恬霖 [50%] | 4h | 4h |
| 59 | 6.1.7 | 审查文档格式并调整、文档备份并更新到github | manual | 1d | 2017-04-05 A | 2017-04-05 A | 100% |  |  | 2017-04-05 | 2017-04-05 | 1d | 2017-04-05 | 2017-04-05 | 付强 [50%] | 4h | 4h |
| 60 | 6.1.8 | 检查非功能性需求并与组员讨论修改 | manual | 1d | 2017-04-05 A | 2017-04-05 A | 100% |  |  | 2017-04-05 | 2017-04-05 | 1d | 2017-04-05 | 2017-04-05 | 付强 [50%] | 4h | 4h |
| 61 | 6.1.9 | 任务分配、审查文档内容并与小组成员沟通、调整术语 | manual | 1d | 2017-04-05 A | 2017-04-05 A | 100% |  |  | 2017-04-05 | 2017-04-05 | 1d | 2017-04-05 | 2017-04-05 | 陈伟民 | 8h | 8h |

| ID | WBS | Task | Type | Duration | Start | Finish | Predecessors | Complete | Actual finish | Baseline start | Baseline finish | Baseline duration | Baseline 1 start | Baseline 1 finish | Constraint | Resources | Work | Actual work |
| --- | --- | --- | --- | --- | --- | --- | --- | --- | --- | --- | --- | --- | --- | --- | --- | --- | --- | --- |
| 62 | 6.2 | **整理文档** |  | 1d | 2017-04-06 A | 2017-04-06 A | 52 | 100% |  | 2017-04-06 | 2017-04-06 | 1d | 2017-04-06 | 2017-04-06 |  |  | 16h | 16h |
| 63 | 6.2.1 | 更新project、整理会议记录和project学习 | manual | 1d | 2017-04-06 A | 2017-04-06 A |  | 100% |  | 2017-04-06 | 2017-04-06 | 1d | 2017-04-06 | 2017-04-06 |  | 曹进 [25%] | 2h | 2h |
| 64 | 6.2.2 | 整理评审记录、文档整理以及github维护 | manual | 1d | 2017-04-06 A | 2017-04-06 A |  | 100% |  | 2017-04-06 | 2017-04-06 | 1d | 2017-04-06 | 2017-04-06 |  | 付强 [25%] | 2h | 2h |
| 65 | 6.2.3 | 整理课堂记录、Torch平台学习和神经网络学习 | manual | 1d | 2017-04-06 A | 2017-04-06 A |  | 100% |  | 2017-04-06 | 2017-04-06 | 1d | 2017-04-06 | 2017-04-06 |  | 李恬霖 [25%] | 2h | 2h |
| 66 | 6.2.4 | 任务分配、组织讨论项目问题和Torch平台学习交流 | manual | 1d | 2017-04-06 A | 2017-04-06 A |  | 100% |  | 2017-04-06 | 2017-04-06 | 1d | 2017-04-06 | 2017-04-06 |  | 陈伟民 [25%] | 2h | 2h |
| 67 | 6.2.5 | Torch平台学习和神经网络学习 | manual | 1d | 2017-04-06 A | 2017-04-06 A |  | 100% |  | 2017-04-06 | 2017-04-06 | 1d | 2017-04-06 | 2017-04-06 |  | 曹进 [25%]; 陈伟民 [25%]; 付强 [25%]; 李恬霖 [25%] | 8h | 8h |
| 68 | 6.3 | **项目知识学习** |  | 1d | 2017-04-07 A | 2017-04-07 A | 62 | 100% |  | 2017-04-07 | 2017-04-07 | 1d | 2017-04-07 | 2017-04-07 |  |  | 8h | 8h |
| 69 | 6.3.1 | Torch平台源码学习和神经网络学习 | manual | 1d | 2017-04-07 A | 2017-04-07 A |  | 100% |  | 2017-04-07 | 2017-04-07 | 1d | 2017-04-07 | 2017-04-07 |  | 李恬霖 [25%] | 2h | 2h |
| 70 | 6.3.2 | 任务分配和Torch平台源码学习和神经网络学习 | manual | 1d | 2017-04-07 A | 2017-04-07 A |  | 100% |  | 2017-04-07 | 2017-04-07 | 1d | 2017-04-07 | 2017-04-07 |  | 陈伟民 [25%] | 2h | 2h |
| 71 | 6.3.3 | Torch平台源码学习和神经网络学习、project学习和更新 | manual | 1d | 2017-04-07 A | 2017-04-07 A |  | 100% |  | 2017-04-07 | 2017-04-07 | 1d | 2017-04-07 | 2017-04-07 |  | 曹进 [25%] | 2h | 2h |
| 72 | 6.3.4 | Torch平台源码学习和神经网络学习、github学习和维护 | manual | 1d | 2017-04-07 A | 2017-04-07 A |  | 100% |  | 2017-04-07 | 2017-04-07 | 1d | 2017-04-07 | 2017-04-07 |  | 付强 [25%] | 2h | 2h |
| 73 | 6.4 | 上课 | manual | 1d | 2017-04-07 A | 2017-04-07 A |  | 100% |  | 2017-04-07 | 2017-04-07 | 1d | 2017-04-07 | 2017-04-07 |  | 陈伟民 [25%]; 付强 [25%]; 李恬霖 [25%]; 曹进 [25%] | 8h | 8h |
| 74 | 6.5 | 整理本周工作文档 | manual | 1d | 2017-04-10 A | 2017-04-10 A | 52, 62, 68 | 100% |  | 2017-04-10 | 2017-04-10 | 1d | 2017-04-07 | 2017-04-07 |  | 李恬霖 [2%] | 0.16h | 0.16h |
| 75 | 6.6 | 制作本周展示ppt | manual | 1d | 2017-04-10 A | 2017-04-10 A | 52, 62, 68 | 100% |  | 2017-04-10 | 2017-04-10 | 1d | 2017-04-07 | 2017-04-07 |  | 陈伟民 [10%] | 0.8h | 0.8h |
| 76 | 6.7 | **组间需求评审** |  | 2d | 2017-04-08 A | 2017-04-10 | 73 | 100% | 2017-04-09 | 2017-04-08 | 2017-04-10 | 2d | 2017-04-08 | 2017-04-09 |  |  | 16h | 16h |
| 77 | 6.7.1 | E组需求分析书格式评审 | manual | 1d | 2017-04-08 A | 2017-04-08 A |  | 100% |  | 2017-04-08 | 2017-04-08 | 1d | 2017-04-08 | 2017-04-08 |  | 陈伟民 [25%] | 2h | 2h |
| 78 | 6.7.2 | E组需求分析书功能性需求评审 | manual | 1d | 2017-04-08 A | 2017-04-08 A |  | 100% |  | 2017-04-08 | 2017-04-08 | 1d | 2017-04-08 | 2017-04-08 |  | 付强 [25%] | 2h | 2h |
| 79 | 6.7.3 | E组需求分析书非功能性需求评审 | manual | 1d | 2017-04-08 A | 2017-04-08 A |  | 100% |  | 2017-04-08 | 2017-04-08 | 1d | 2017-04-08 | 2017-04-08 |  | 李恬霖 [25%] | 2h | 2h |
| 80 | 6.7.4 | E组RUCM和用例评审 | manual | 1d | 2017-04-08 A | 2017-04-08 A |  | 100% |  | 2017-04-08 | 2017-04-08 | 1d | 2017-04-08 | 2017-04-08 |  | 陈伟民 [25%] | 2h | 2h |
| 81 | 6.7.5 | F组需求分析书格式评审 | manual | 1d | 2017-04-09 A | 2017-04-09 A |  | 100% |  | 2017-04-09 | 2017-04-09 | 1d | 2017-04-09 | 2017-04-09 |  | 陈伟民 [25%] | 2h | 2h |
| 82 | 6.7.6 | F组需求分析书功能性需求评审 | manual | 1d | 2017-04-09 A | 2017-04-09 A |  | 100% |  | 2017-04-09 | 2017-04-09 | 1d | 2017-04-09 | 2017-04-09 |  | 付强 [25%] | 2h | 2h |
| 83 | 6.7.7 | F组需求分析书非功能性需求评审 | manual | 1d | 2017-04-09 A | 2017-04-09 A |  | 100% |  | 2017-04-09 | 2017-04-09 | 1d | 2017-04-09 | 2017-04-09 |  | 李恬霖 [25%] | 2h | 2h |
| 84 | 6.7.8 | F组RUCM和用例评审 | manual | 1d | 2017-04-09 A | 2017-04-09 A |  | 100% |  | 2017-04-09 | 2017-04-09 | 1d | 2017-04-09 | 2017-04-09 |  | 曹进 [25%] | 2h | 2h |
| 85 | 7 | **项目需求评审与修改** |  | 6d | 2017-04-10 A | 2017-04-17 A |  | 100% |  | 2017-04-10 | 2017-04-17 | 6d | 2017-04-10 | 2017-04-14 |  |  | 48.96h | 48.96h |
| 86 | 7.1 | **需求改进和任务布置** |  | 1d | 2017-04-10 A | 2017-04-10 A |  | 100% |  | 2017-04-10 | 2017-04-10 | 1d | 2017-04-10 | 2017-04-10 |  |  | 8h | 8h |
| 87 | 7.1.1 | 修改RUCM和更新project | manual | 1d | 2017-04-10 A | 2017-04-10 A | 76 | 100% |  | 2017-04-10 | 2017-04-10 | 1d | 2017-04-10 | 2017-04-10 |  | 曹进 [25%] | 2h | 2h |
| 88 | 7.1.2 | 统计评审意见和github维护 | manual | 1d | 2017-04-10 A | 2017-04-10 A | 76 | 100% |  | 2017-04-10 | 2017-04-10 | 1d | 2017-04-10 | 2017-04-10 |  | 付强 [25%] | 2h | 2h |
| 89 | 7.1.3 | 调整文档“功能分析”内容和格式 | manual | 1d | 2017-04-10 A | 2017-04-10 A | 76 | 100% |  | 2017-04-10 | 2017-04-10 | 1d | 2017-04-10 | 2017-04-10 |  | 李恬霖 [25%] | 2h | 2h |
| 90 | 7.1.4 | 文档内容审核和文档整理 | manual | 1d | 2017-04-10 A | 2017-04-10 A | 76 | 100% |  | 2017-04-10 | 2017-04-10 | 1d | 2017-04-10 | 2017-04-10 | finish no earlier than 2017-04-10 | 陈伟民 [25%] | 2h | 2h |

| ID | WBS | Task | Type | Duration | Start | Finish | Predecessors | Complete | Baseline start | Baseline finish | Baseline duration | Baseline 1 start | Baseline 1 finish | Resources | Work | Actual work |
| --- | --- | --- | --- | --- | --- | --- | --- | --- | --- | --- | --- | --- | --- | --- | --- | --- |
| 91 | 7.2 | **完成一周工作** |  | 4d | 2017-04-11 A | 2017-04-14 A | 86 | 100% | 2017-04-11 | 2017-04-14 | 4d | 2017-04-11 | 2017-04-14 |  | 32h | 32h |
| 92 | 7.2.1 | 整理会议记录和学习torch源码 | manual | 4d | 2017-04-11 A | 2017-04-14 A |  | 100% | 2017-04-11 | 2017-04-14 | 4d | 2017-04-11 | 2017-04-14 | 曹进 [25%] | 8h | 8h |
| 93 | 7.2.2 | 整理文档和学习torch源码 | manual | 4d | 2017-04-11 A | 2017-04-14 A |  | 100% | 2017-04-11 | 2017-04-14 | 4d | 2017-04-11 | 2017-04-14 | 付强 [25%] | 8h | 8h |
| 94 | 7.2.3 | 整理需求评审文档和学习torch源码 | manual | 4d | 2017-04-11 A | 2017-04-14 A |  | 100% | 2017-04-11 | 2017-04-14 | 4d | 2017-04-11 | 2017-04-14 | 李恬霖 [25%] | 8h | 8h |
| 95 | 7.2.4 | 学习torch源码和项目ppt制作 | manual | 4d | 2017-04-11 A | 2017-04-14 A |  | 100% | 2017-04-11 | 2017-04-14 | 4d | 2017-04-11 | 2017-04-14 | 陈伟民 [25%] | 8h | 8h |
| 96 | 7.3 | 上课 | manual | 1d | 2017-04-14 A | 2017-04-14 A |  | 100% | 2017-04-14 | 2017-04-14 | 1d | 2017-04-14 | 2017-04-14 | 曹进 [25%]; 陈伟民 [25%]; 付强 [25%]; 李恬霖 [25%] | 8h | 8h |
| 97 | 7.4 | 整理本周工作文档 | manual | 1d | 2017-04-17 A | 2017-04-17 A | 91 | 100% | 2017-04-17 | 2017-04-17 | 1d | 2017-04-14 | 2017-04-14 | 李恬霖 [2%] | 0.16h | 0.16h |
| 98 | 7.5 | 制作本周展示ppt | manual | 1d | 2017-04-17 A | 2017-04-17 A | 91 | 100% | 2017-04-17 | 2017-04-17 | 1d | 2017-04-14 | 2017-04-14 | 陈伟民 [10%] | 0.8h | 0.8h |
| 99 | 8 | **项目需求复评审** |  | 5d | 2017-04-17 A | 2017-04-21 A |  | 100% | 2017-04-17 | 2017-04-21 | 5d | 2017-04-17 | 2017-04-21 |  | 48.96h | 48.96h |
| 100 | 8.1 | 确定实验一、二的目标 | manual | 1d | 2017-04-17 A | 2017-04-17 A | 96 | 100% | 2017-04-17 | 2017-04-17 | 1d | 2017-04-17 | 2017-04-17 | 曹进 [25%] | 2h | 2h |
| 101 | 8.2 | 确定实验三目标，学习Torch源码 | manual | 1d | 2017-04-17 A | 2017-04-17 A | 96 | 100% | 2017-04-17 | 2017-04-17 | 1d | 2017-04-17 | 2017-04-17 | 付强 [25%] | 2h | 2h |
| 102 | 8.3 | 确定实验四、实验五目标 | manual | 1d | 2017-04-17 A | 2017-04-17 A | 96 | 100% | 2017-04-17 | 2017-04-17 | 1d | 2017-04-17 | 2017-04-17 | 李恬霖 [25%] | 2h | 2h |
| 103 | 8.4 | 描述实验六、实验七目标 | manual | 1d | 2017-04-17 A | 2017-04-17 A | 96 | 100% | 2017-04-17 | 2017-04-17 | 1d | 2017-04-17 | 2017-04-17 | 陈伟民 [25%] | 2h | 2h |
| 104 | 8.5 | 修改用例和增加两个RUCM | manual | 1d | 2017-04-18 A | 2017-04-18 A |  | 100% | 2017-04-18 | 2017-04-18 | 1d | 2017-04-18 | 2017-04-18 | 曹进 [25%] | 2h | 2h |
| 105 | 8.6 | 学习Torch源码 | manual | 1d | 2017-04-18 A | 2017-04-18 A |  | 100% | 2017-04-18 | 2017-04-18 | 1d | 2017-04-18 | 2017-04-18 | 付强 [25%] | 2h | 2h |
| 106 | 8.7 | 审核需求分析文档和学习Torch源码 | manual | 1d | 2017-04-18 A | 2017-04-18 A |  | 100% | 2017-04-18 | 2017-04-18 | 1d | 2017-04-18 | 2017-04-18 | 李恬霖 [25%] | 2h | 2h |
| 107 | 8.8 | 审核实验一至实验七的目标文档和学习Torch源码 | manual | 1d | 2017-04-18 A | 2017-04-18 A | 100, 101, 102, 103 | 100% | 2017-04-18 | 2017-04-18 | 1d | 2017-04-18 | 2017-04-18 | 陈伟民 [25%] | 2h | 2h |
| 108 | 8.9 | 需求分析组间评审 | manual | 1d | 2017-04-19 A | 2017-04-19 A |  | 100% | 2017-04-19 | 2017-04-19 | 1d | 2017-04-19 | 2017-04-19 | 曹进 [25%] | 2h | 2h |
| 109 | 8.10 | 需求分析组间评审和评审整理 | manual | 1d | 2017-04-19 A | 2017-04-19 A |  | 100% | 2017-04-19 | 2017-04-19 | 1d | 2017-04-19 | 2017-04-19 | 陈伟民 [25%] | 2h | 2h |
| 110 | 8.11 | 需求分析组间评审 | manual | 1d | 2017-04-19 A | 2017-04-19 A |  | 100% | 2017-04-19 | 2017-04-19 | 1d | 2017-04-19 | 2017-04-19 | 付强 [25%] | 2h | 2h |
| 111 | 8.12 | 需求分析组间评审和评审整理 | manual | 1d | 2017-04-19 A | 2017-04-19 A |  | 100% | 2017-04-19 | 2017-04-19 | 1d | 2017-04-19 | 2017-04-19 | 李恬霖 [25%] | 2h | 2h |
| 112 | 8.13 | 讨论Torch项目扩展方向 | manual | 1d | 2017-04-20 A | 2017-04-20 A |  | 100% | 2017-04-20 | 2017-04-20 | 1d | 2017-04-20 | 2017-04-20 | 曹进 [25%]; 陈伟民 [25%]; 付强 [25%]; 李恬霖 [25%] | 8h | 8h |
| 113 | 8.14 | Torch源码学习 | manual | 1d | 2017-04-21 A | 2017-04-21 A | 112 | 100% | 2017-04-21 | 2017-04-21 | 1d | 2017-04-21 | 2017-04-21 | 曹进 [25%] | 2h | 2h |
| 114 | 8.15 | Torch源码学习 | manual | 1d | 2017-04-21 A | 2017-04-21 A | 112 | 100% | 2017-04-21 | 2017-04-21 | 1d | 2017-04-21 | 2017-04-21 | 陈伟民 [25%] | 2h | 2h |
| 115 | 8.16 | Torch源码学习 | manual | 1d | 2017-04-21 A | 2017-04-21 A | 112 | 100% | 2017-04-21 | 2017-04-21 | 1d | 2017-04-21 | 2017-04-21 | 付强 [25%] | 2h | 2h |
| 116 | 8.17 | Torch源码学习 | manual | 1d | 2017-04-21 A | 2017-04-21 A | 112 | 100% | 2017-04-21 | 2017-04-21 | 1d | 2017-04-21 | 2017-04-21 | 李恬霖 [25%] | 2h | 2h |
| 117 | 8.18 | 上课(需求评审和实验八展示) | manual | 1d | 2017-04-21 A | 2017-04-21 A |  | 100% | 2017-04-21 | 2017-04-21 | 1d | 2017-04-21 | 2017-04-21 | 曹进 [25%]; 陈伟民 [25%]; 付强 [25%]; 李恬霖 [25%] | 8h | 8h |
| 118 | 8.19 | 整理本周工作文档 | manual | 1d | 2017-04-21 A | 2017-04-21 A | 109, 111, 112 | 100% | 2017-04-21 | 2017-04-21 | 1d | 2017-04-21 | 2017-04-21 | 李恬霖 [2%] | 0.16h | 0.16h |
| 119 | 8.20 | 制作本周展示ppt | manual | 1d | 2017-04-21 A | 2017-04-21 A | 109, 111, 112 | 100% | 2017-04-21 | 2017-04-21 | 1d | 2017-04-21 | 2017-04-21 | 陈伟民 [10%] | 0.8h | 0.8h |

| ID | WBS | Task | Type | Duration | Start | Finish | Predecessors | Complete | Baseline start | Baseline finish | Baseline duration | Baseline 1 start | Baseline 1 finish | Resources | Work | Actual work |
| --- | --- | --- | --- | --- | --- | --- | --- | --- | --- | --- | --- | --- | --- | --- | --- | --- |
| 120 | 9 | **需求评审、改进和软件产品第一次改进** |  | 5d | 2017-04-24 A | 2017-04-28 A |  | 100% | 2017-04-24 | 2017-04-28 | 5d | 2017-04-24 | 2017-04-28 |  | 64.96h | 64.96h |
| 121 | 9.1 | 学习Torch源码、设计神经网络改进方案 | manual | 1d | 2017-04-24 A | 2017-04-24 A |  | 100% | 2017-04-24 | 2017-04-24 | 1d | 2017-04-24 | 2017-04-24 | 曹进 [25%] | 2h | 2h |
| 122 | 9.2 | 学习Torch源码、设计神经网络改进方案 | manual | 1d | 2017-04-24 A | 2017-04-24 A |  | 100% | 2017-04-24 | 2017-04-24 | 1d | 2017-04-24 | 2017-04-24 | 陈伟民 [25%] | 2h | 2h |
| 123 | 9.3 | 学习Torch源码、设计神经网络改进方案 | manual | 1d | 2017-04-24 A | 2017-04-24 A |  | 100% | 2017-04-24 | 2017-04-24 | 1d | 2017-04-24 | 2017-04-24 | 付强 [25%] | 2h | 2h |
| 124 | 9.4 | 学习Torch源码、设计神经网络改进方案 | manual | 1d | 2017-04-24 A | 2017-04-24 A |  | 100% | 2017-04-24 | 2017-04-24 | 1d | 2017-04-24 | 2017-04-24 | 李恬霖 [25%] | 2h | 2h |
| 125 | 9.5 | 对E组需求分析进行评审 | manual | 1d | 2017-04-24 A | 2017-04-24 A |  | 100% | 2017-04-24 | 2017-04-24 | 1d | 2017-04-24 | 2017-04-24 | 曹进 [25%]; 陈伟民 [25%]; 付强 [25%]; 李恬霖 [25%] | 8h | 8h |
| 126 | 9.6 | 对F组需求分析进行评审 | manual | 1d | 2017-04-25 A | 2017-04-25 A |  | 100% | 2017-04-25 | 2017-04-25 | 1d | 2017-04-25 | 2017-04-25 | 曹进 [25%]; 陈伟民 [25%]; 付强 [25%]; 李恬霖 [25%] | 8h | 8h |
| 127 | 9.7 | 根据评审意见对需求分析进行修改 | manual | 1d | 2017-04-26 A | 2017-04-26 A |  | 100% | 2017-04-26 | 2017-04-26 | 1d | 2017-04-26 | 2017-04-26 | 曹进 [25%]; 陈伟民 [25%]; 付强 [25%]; 李恬霖 [25%] | 8h | 8h |
| 128 | 9.8 | 根据设计方案，阅读源码 | manual | 3d | 2017-04-25 A | 2017-04-27 A | 121, 122, 123, 124 | 100% | 2017-04-25 | 2017-04-27 | 3d | 2017-04-26 | 2017-04-27 | 曹进 [25%]; 付强 [25%]; 李恬霖 [25%] | 18h | 18h |
| 129 | 9.9 | 根据设计方案，阅读源码 | manual | 3d | 2017-04-25 A | 2017-04-27 A | 121, 122, 123, 124 | 100% | 2017-04-25 | 2017-04-27 | 3d | 2017-04-26 | 2017-04-28 | 曹进 [25%] | 6h | 6h |
| 130 | 9.10 | 上课 | manual | 1d | 2017-04-28 A | 2017-04-28 A |  | 100% | 2017-04-28 | 2017-04-28 | 1d | 2017-04-28 | 2017-04-28 | 曹进 [25%]; 陈伟民 [25%]; 付强 [25%]; 李恬霖 [25%] | 8h | 8h |
| 131 | 9.11 | 整理本周工作文档 | manual | 1d | 2017-04-28 A | 2017-04-28 A | 125, 126, 127, 128, 129 | 100% | 2017-04-28 | 2017-04-28 | 1d | 2017-04-28 | 2017-04-28 | 李恬霖 [2%] | 0.16h | 0.16h |
| 132 | 9.12 | 制作本周展示ppt | manual | 1d | 2017-04-28 A | 2017-04-28 A | 125, 126, 127, 128, 129 | 100% | 2017-04-28 | 2017-04-28 | 1d | 2017-04-28 | 2017-04-28 | 陈伟民 [10%] | 0.8h | 0.8h |
| 133 | 10 | **软件产品第二次改进** |  | 5d | 2017-05-01 A | 2017-05-05 A |  | 100% | 2017-05-01 | 2017-05-05 | 5d | 2017-05-01 | 2017-05-05 |  | 56.96h | 56.96h |
| 134 | 10.1 | 阅读Torch全连接层、卷积层的源码 | manual | 1d | 2017-05-01 A | 2017-05-01 A |  | 100% | 2017-05-01 | 2017-05-01 | 1d | 2017-05-01 | 2017-05-01 | 曹进 [25%] | 2h | 2h |
| 135 | 10.2 | 阅读Torch全连接层、卷积层的源码 | manual | 1d | 2017-05-01 A | 2017-05-01 A |  | 100% | 2017-05-01 | 2017-05-01 | 1d | 2017-05-01 | 2017-05-01 | 陈伟民 [25%] | 2h | 2h |
| 136 | 10.3 | 阅读Torch全连接层、卷积层的源码 | manual | 1d | 2017-05-01 A | 2017-05-01 A |  | 100% | 2017-05-01 | 2017-05-01 | 1d | 2017-05-01 | 2017-05-01 | 付强 [25%] | 2h | 2h |
| 137 | 10.4 | 阅读Torch全连接层、卷积层的源码 | manual | 1d | 2017-05-01 A | 2017-05-01 A |  | 100% | 2017-05-01 | 2017-05-01 | 1d | 2017-05-01 | 2017-05-01 | 李恬霖 [25%] | 2h | 2h |
| 138 | 10.5 | 需求分析说明书修改 | manual | 1d | 2017-05-02 A | 2017-05-02 A |  | 100% | 2017-05-02 | 2017-05-02 | 1d | 2017-05-02 | 2017-05-02 | 曹进 [25%]; 陈伟民 [25%]; 付强 [25%]; 李恬霖 [25%] | 8h | 8h |
| 139 | 10.6 | 全连接层、卷积层随机P激活函数y=x修改 | manual | 4d | 2017-05-02 A | 2017-05-05 A | 134 | 100% | 2017-05-02 | 2017-05-05 | 4d | 2017-05-02 | 2017-05-05 | 曹进 [25%] | 8h | 8h |
| 140 | 10.7 | 全连接层、卷积层随机P激活函数y=x修改 | manual | 4d | 2017-05-02 A | 2017-05-05 A | 135 | 100% | 2017-05-02 | 2017-05-05 | 4d | 2017-05-02 | 2017-05-05 | 付强 [25%] | 8h | 8h |
| 141 | 10.8 | 全连接层、卷积层随机P激活函数Htanh修改、课堂ppt准备 | manual | 4d | 2017-05-02 A | 2017-05-05 A | 136 | 100% | 2017-05-02 | 2017-05-05 | 4d | 2017-05-02 | 2017-05-05 | 陈伟民 [25%] | 8h | 8h |
| 142 | 10.9 | 全连接层、卷积层随机P激活函数Htanh修改 | manual | 4d | 2017-05-02 A | 2017-05-05 A | 137 | 100% | 2017-05-02 | 2017-05-05 | 4d | 2017-05-02 | 2017-05-05 | 李恬霖 [25%] | 8h | 8h |
| 143 | 10.10 | 上课 | manual | 1d | 2017-05-02 A | 2017-05-02 A |  | 100% | 2017-05-02 | 2017-05-02 | 1d | 2017-05-05 | 2017-05-05 | 曹进 [25%]; 陈伟民 [25%]; 付强 [25%]; 李恬霖 [25%] | 8h | 8h |
| 144 | 10.11 | 整理本周工作文档 | manual | 1d | 2017-05-02 A | 2017-05-02 A | 139, 140, 141, 142 | 100% | 2017-05-02 | 2017-05-02 | 1d | 2017-05-05 | 2017-05-05 | 李恬霖 [2%] | 0.16h | 0.16h |
| 145 | 10.12 | 制作本周展示ppt | manual | 1d | 2017-05-02 A | 2017-05-02 A | 139, 140, 141, 142 | 100% | 2017-05-02 | 2017-05-02 | 1d | 2017-05-05 | 2017-05-05 | 陈伟民 [10%] | 0.8h | 0.8h |

| ID | WBS | Task | Type | Duration | Start | Finish | Predecessors | Complete | Baseline start | Baseline finish | Baseline duration | Baseline 1 start | Baseline 1 finish | Resources | Work | Actual work |
| --- | --- | --- | --- | --- | --- | --- | --- | --- | --- | --- | --- | --- | --- | --- | --- | --- |
| 146 | 11 | **软件产品第三次改进** |  | 5d | 2017-05-08 A | 2017-05-12 A |  | 100% | 2017-05-08 | 2017-05-12 | 5d | 2017-05-08 | 2017-05-12 |  | 48.96h | 48.96h |
| 147 | 11.1 | 阅读Torch全连接层、卷积层的源码 | manual | 1d | 2017-05-08 A | 2017-05-08 A |  | 100% | 2017-05-08 | 2017-05-08 | 1d | 2017-05-08 | 2017-05-08 | 曹进 [25%] | 2h | 2h |
| 148 | 11.2 | 阅读Torch全连接层、卷积层的源码 | manual | 1d | 2017-05-08 A | 2017-05-08 A |  | 100% | 2017-05-08 | 2017-05-08 | 1d | 2017-05-08 | 2017-05-08 | 陈伟民 [25%] | 2h | 2h |
| 149 | 11.3 | 阅读Torch全连接层、卷积层的源码 | manual | 1d | 2017-05-08 A | 2017-05-08 A |  | 100% | 2017-05-08 | 2017-05-08 | 1d | 2017-05-08 | 2017-05-08 | 付强 [25%] | 2h | 2h |
| 150 | 11.4 | 阅读Torch全连接层、卷积层的源码 | manual | 1d | 2017-05-08 A | 2017-05-08 A |  | 100% | 2017-05-08 | 2017-05-08 | 1d | 2017-05-08 | 2017-05-08 | 李恬霖 [25%] | 2h | 2h |
| 151 | 11.5 | 全连接层、卷积层训练P激活函数y=x修改 | manual | 4d | 2017-05-09 A | 2017-05-12 A | 147 | 100% | 2017-05-09 | 2017-05-12 | 4d | 2017-05-09 | 2017-05-12 | 曹进 [25%] | 8h | 8h |
| 152 | 11.6 | 全连接层、卷积层训练P激活函数y=x修改 | manual | 4d | 2017-05-09 A | 2017-05-12 A | 148 | 100% | 2017-05-09 | 2017-05-12 | 4d | 2017-05-09 | 2017-05-12 | 付强 [25%] | 8h | 8h |
| 153 | 11.7 | 全连接层、卷积层训练P激活函数Htanh修改、课堂ppt准备 | manual | 4d | 2017-05-09 A | 2017-05-12 A | 149 | 100% | 2017-05-09 | 2017-05-12 | 4d | 2017-05-09 | 2017-05-12 | 陈伟民 [25%] | 8h | 8h |
| 154 | 11.8 | 全连接层、卷积层训练P激活函数Htanh修改 | manual | 4d | 2017-05-09 A | 2017-05-12 A | 150 | 100% | 2017-05-09 | 2017-05-12 | 4d | 2017-05-09 | 2017-05-12 | 李恬霖 [25%] | 8h | 8h |
| 155 | 11.9 | 上课 | manual | 1d | 2017-05-12 A | 2017-05-12 A |  | 100% | 2017-05-12 | 2017-05-12 | 1d | 2017-05-12 | 2017-05-12 | 曹进 [25%]; 陈伟民 [25%]; 付强 [25%]; 李恬霖 [25%] | 8h | 8h |
| 156 | 11.10 | 整理本周工作文档 | manual | 1d | 2017-05-12 A | 2017-05-12 A | 151, 152, 153, 154 | 100% | 2017-05-12 | 2017-05-12 | 1d | 2017-05-12 | 2017-05-12 | 李恬霖 [2%] | 0.16h | 0.16h |
| 157 | 11.11 | 制作本周展示ppt | manual | 1d | 2017-05-12 A | 2017-05-12 A | 151, 152, 153, 154 | 100% | 2017-05-12 | 2017-05-12 | 1d | 2017-05-12 | 2017-05-12 | 陈伟民 [10%] | 0.8h | 0.8h |
| 158 | 12 | **软件测试分析** |  | 5d | 2017-05-15 A | 2017-05-19 A |  | 100% | 2017-05-15 | 2017-05-19 | 5d | 2017-05-15 | 2017-05-19 |  | 48.96h | 48.96h |
| 159 | 12.1 | 软件测试方法学习 | manual | 2d | 2017-05-15 A | 2017-05-16 A |  | 100% | 2017-05-15 | 2017-05-16 | 2d | 2017-05-15 | 2017-05-16 | 曹进 [25%]; 陈伟民 [25%]; 李恬霖 [25%]; 付强 [25%] | 16h | 16h |
| 160 | 12.2 | 编写测试规格说明书 | manual | 1d | 2017-05-17 A | 2017-05-17 A |  | 100% | 2017-05-17 | 2017-05-17 | 1d | 2017-05-17 | 2017-05-17 | 付强 [25%]; 李恬霖 [25%] | 4h | 4h |
| 161 | 12.3 | 设计测试用例 | manual | 1d | 2017-05-18 A | 2017-05-18 A | 160 | 100% | 2017-05-18 | 2017-05-18 | 1d | 2017-05-17 | 2017-05-17 | 曹进 [25%]; 陈伟民 [25%] | 4h | 4h |
| 162 | 12.4 | 根据测试规格说明书进行软件测试 | manual | 2d | 2017-05-18 A | 2017-05-19 A | 160 | 100% | 2017-05-18 | 2017-05-19 | 2d | 2017-05-18 | 2017-05-19 | 陈伟民 [25%]; 李恬霖 [25%]; 付强 [25%]; 曹进 [25%] | 16h | 16h |
| 163 | 12.5 | 上课 | manual | 1d | 2017-05-19 A | 2017-05-19 A |  | 100% | 2017-05-19 | 2017-05-19 | 1d | 2017-05-19 | 2017-05-19 | 曹进 [25%]; 陈伟民 [25%]; 李恬霖 [25%]; 付强 [25%] | 8h | 8h |
| 164 | 12.6 | 整理本周工作文档 | manual | 1d | 2017-05-19 A | 2017-05-19 A | 160, 161, 162 | 100% | 2017-05-19 | 2017-05-19 | 1d | 2017-05-19 | 2017-05-19 | 李恬霖 [2%] | 0.16h | 0.16h |
| 165 | 12.7 | 制作本周展示ppt | manual | 1d | 2017-05-19 A | 2017-05-19 A | 160, 161, 162 | 100% | 2017-05-19 | 2017-05-19 | 1d | 2017-05-19 | 2017-05-19 | 陈伟民 [10%] | 0.8h | 0.8h |
| 166 | 13 | **软件测试评审** |  | 5d | 2017-05-22 A | 2017-05-26 A | 162 | 100% | 2017-05-22 | 2017-05-26 | 5d | 2017-05-22 | 2017-05-26 |  | 72.96h | 72.96h |
| 167 | 13.1 | 完善测试规格说明书的非功能需求测试部分 | manual | 1d | 2017-05-22 A | 2017-05-22 A |  | 100% | 2017-05-22 | 2017-05-22 | 1d | 2017-05-22 | 2017-05-22 | 曹进 [25%]; 李恬霖 [25%] | 4h | 4h |
| 168 | 13.2 | 完善测试规格说明书的扩展功能测试部分 | manual | 1d | 2017-05-22 A | 2017-05-22 A |  | 100% | 2017-05-22 | 2017-05-22 | 1d | 2017-05-22 | 2017-05-22 | 陈伟民 [25%]; 付强 [25%] | 4h | 4h |
| 169 | 13.3 | 根据测试规格说明书进行软件安装测试和非功能性测试 | manual | 5d | 2017-05-22 A | 2017-05-26 A | 162, 167, 168 | 100% | 2017-05-22 | 2017-05-26 | 5d | 2017-05-22 | 2017-05-26 | 李恬霖 [25%] | 10h | 10h |
| 170 | 13.4 | 根据测试规格说明书进行软件的功能性测试 | manual | 5d | 2017-05-22 A | 2017-05-26 A | 162, 167, 168 | 100% | 2017-05-22 | 2017-05-26 | 5d | 2017-05-22 | 2017-05-26 | 曹进 [25%] | 10h | 10h |
| 171 | 13.5 | 根据测试规格说明书进行软件的功能性测试 | manual | 5d | 2017-05-22 A | 2017-05-26 A | 162, 167, 168 | 100% | 2017-05-22 | 2017-05-26 | 5d | 2017-05-22 | 2017-05-26 | 付强 [25%] | 10h | 10h |
| 172 | 13.6 | 根据测试规格说明书进行软件的扩展功能测试 | manual | 5d | 2017-05-22 A | 2017-05-26 A | 162, 167, 168 | 100% | 2017-05-22 | 2017-05-26 | 5d | 2017-05-22 | 2017-05-26 | 陈伟民 [25%] | 10h | 10h |
| 173 | 13.7 | 对E组的测试评审 | manual | 1d | 2017-05-23 A | 2017-05-23 A |  | 100% | 2017-05-23 | 2017-05-23 | 1d | 2017-05-23 | 2017-05-23 | 曹进 [25%]; 陈伟民 [25%]; 李恬霖 [25%]; 付强 [25%] | 8h | 8h |
| 174 | 13.8 | 对F组的测试评审、修改测试需求规格书 | manual | 1d | 2017-05-24 A | 2017-05-24 A |  | 100% | 2017-05-24 | 2017-05-24 | 1d | 2017-05-24 | 2017-05-24 | 曹进 [25%]; 陈伟民 [25%]; 李恬霖 [25%]; 付强 [25%] | 8h | 8h |
| 175 | 13.9 | 上课 | manual | 1d | 2017-05-26 A | 2017-05-26 A |  | 100% | 2017-05-26 | 2017-05-26 | 1d | 2017-05-26 | 2017-05-26 | 曹进 [25%]; 陈伟民 [25%]; 李恬霖 [25%]; 付强 [25%] | 8h | 8h |
| 176 | 13.10 | 整理本周工作文档 | manual | 1d | 2017-05-26 A | 2017-05-26 A | 167, 168, 169, 170, 171, 172, 173, 174 | 100% | 2017-05-26 | 2017-05-26 | 1d | 2017-05-26 | 2017-05-26 | 李恬霖 [2%] | 0.16h | 0.16h |
| 177 | 13.11 | 制作本周展示ppt | manual | 1d | 2017-05-26 A | 2017-05-26 A | 167, 168, 169, 170, 171, 172, 173, 174 | 100% | 2017-05-26 | 2017-05-26 | 1d | 2017-05-26 | 2017-05-26 | 陈伟民 [10%] | 0.8h | 0.8h |

| ID | WBS | Task | Type | Duration | Start | Finish | Predecessors | Complete | Remaining | Actual start | Baseline start | Baseline finish | Baseline duration | Baseline 1 start | Baseline 1 finish | Resources | Work | Actual work |
| --- | --- | --- | --- | --- | --- | --- | --- | --- | --- | --- | --- | --- | --- | --- | --- | --- | --- | --- |
| 178 | 14 | **软件测试复评审** |  | 5d | 2017-05-29 A | 2017-06-02 A |  | 100% |  |  | 2017-05-29 | 2017-06-02 | 5d | 2017-05-29 | 2017-06-02 |  | 24.96h | 24.96h |
| 179 | 14.1 | 测试规格说明书修改 | manual | 1d | 2017-05-29 A | 2017-05-29 A |  | 100% |  |  | 2017-05-29 | 2017-05-29 | 1d | 2017-05-29 | 2017-05-30 | 曹进 [25%]; 李恬霖 [25%] | 4h | 4h |
| 180 | 14.2 | 对torch测试 | manual | 1d | 2017-05-31 A | 2017-05-31 A |  | 100% |  |  | 2017-05-31 | 2017-05-31 | 1d | 2017-05-31 | 2017-05-31 | 陈伟民 [25%]; 付强 [25%] | 4h | 4h |
| 181 | 14.3 | 对F组的测试评审 | manual | 1d | 2017-06-01 A | 2017-06-01 A |  | 100% |  |  | 2017-06-01 | 2017-06-01 | 1d | 2017-06-01 | 2017-06-01 | 曹进 [25%]; 陈伟民 [25%]; 李恬霖 [25%]; 付强 [25%] | 8h | 8h |
| 182 | 14.4 | 上课 | manual | 1d | 2017-06-02 A | 2017-06-02 A |  | 100% |  |  | 2017-06-02 | 2017-06-02 | 1d | 2017-06-02 | 2017-06-02 | 曹进 [25%]; 陈伟民 [25%]; 李恬霖 [25%]; 付强 [25%] | 8h | 8h |
| 183 | 14.5 | 整理本周工作文档 | manual | 1d | 2017-06-02 A | 2017-06-02 A |  | 100% |  |  | 2017-06-02 | 2017-06-02 | 1d | 2017-06-02 | 2017-06-02 | 李恬霖 [2%] | 0.16h | 0.16h |
| 184 | 14.6 | 制作本周展示ppt | manual | 1d | 2017-06-02 A | 2017-06-02 A |  | 100% |  |  | 2017-06-02 | 2017-06-02 | 1d | 2017-06-02 | 2017-06-02 | 陈伟民 [10%] | 0.8h | 0.8h |
| 185 | 15 | **软件演示与测评** |  | 5d | 2017-06-05 | 2017-06-09 | 179 |  |  |  | 2017-06-05 | 2017-06-09 | 5d | 2017-06-05 | 2017-06-09 |  | 48.96h |  |
| 186 | 15.1 | 软件测评 | manual | 5d? | 2017-06-05 | 2017-06-09 |  |  |  |  | 2017-06-05 | 2017-06-09 | 5d? | 2017-06-05 | 2017-06-09 | 曹进 [25%]; 陈伟民 [25%]; 李恬霖 [25%]; 付强 [25%] | 40h |  |
| 187 | 15.2 | 上课 | manual | 1d? | 2017-06-09 | 2017-06-09 |  |  |  |  | 2017-06-09 | 2017-06-09 | 1d? | 2017-06-09 | 2017-06-09 | 曹进 [25%]; 陈伟民 [25%]; 李恬霖 [25%]; 付强 [25%] | 8h |  |
| 188 | 15.3 | 整理本周工作文档 | manual | 1d? | 2017-06-09 | 2017-06-09 |  |  |  |  | 2017-06-09 | 2017-06-09 | 1d? | 2017-06-09 | 2017-06-09 | 李恬霖 [2%] | 0.16h |  |
| 189 | 15.4 | 制作本周展示ppt | manual | 1d? | 2017-06-09 | 2017-06-09 |  |  |  |  | 2017-06-09 | 2017-06-09 | 1d? | 2017-06-09 | 2017-06-09 | 陈伟民 [10%] | 0.8h |  |
| 190 | 16 | **综合实验分析** |  | 5d | 2017-06-12 | 2017-06-16 | 185 |  |  |  | 2017-06-12 | 2017-06-16 | 5d | 2017-06-12 | 2017-06-16 |  | 48.96h |  |
| 191 | 16.1 | 实验1-7分析 | manual | 5d | 2017-06-12 | 2017-06-16 |  |  |  |  | 2017-06-12 | 2017-06-16 | 5d | 2017-06-12 | 2017-06-16 | 曹进 [25%]; 陈伟民 [25%]; 李恬霖 [25%]; 付强 [25%] | 40h |  |
| 192 | 16.2 | 上课 | manual | 1d | 2017-06-16 | 2017-06-16 |  |  |  |  | 2017-06-16 | 2017-06-16 | 1d | 2017-06-16 | 2017-06-16 | 曹进 [25%]; 陈伟民 [25%]; 李恬霖 [25%]; 付强 [25%] | 8h |  |
| 193 | 16.3 | 整理本周工作文档 | manual | 1d | 2017-06-16 | 2017-06-16 |  |  |  |  | 2017-06-16 | 2017-06-16 | 1d | 2017-06-16 | 2017-06-16 | 李恬霖 [2%] | 0.16h |  |
| 194 | 16.4 | 制作本周展示ppt | manual | 1d | 2017-06-16 | 2017-06-16 |  |  |  |  | 2017-06-16 | 2017-06-16 | 1d | 2017-06-16 | 2017-06-16 | 陈伟民 [10%] | 0.8h |  |
| 195 | 17 | **综合实验总结** |  | 5d | 2017-06-19 | 2017-06-23 | 190 |  |  |  | 2017-06-19 | 2017-06-23 | 5d | 2017-06-19 | 2017-06-23 |  | 48.96h |  |
| 196 | 17.1 | 实验1-7总结 | manual | 5d? | 2017-06-19 | 2017-06-23 |  |  |  |  | 2017-06-19 | 2017-06-23 | 5d? | 2017-06-19 | 2017-06-23 | 曹进 [25%]; 陈伟民 [25%]; 李恬霖 [25%]; 付强 [25%] | 40h |  |
| 197 | 17.2 | 上课 | manual | 1d? | 2017-06-23 | 2017-06-23 |  |  |  |  | 2017-06-23 | 2017-06-23 | 1d? | 2017-06-23 | 2017-06-23 | 曹进 [25%]; 陈伟民 [25%]; 李恬霖 [25%]; 付强 [25%] | 8h |  |
| 198 | 17.3 | 整理本周工作文档 | manual | 1d? | 2017-06-23 | 2017-06-23 |  |  |  |  | 2017-06-23 | 2017-06-23 | 1d? | 2017-06-23 | 2017-06-23 | 李恬霖 [2%] | 0.16h |  |
| 199 | 17.4 | 制作本周展示ppt | manual | 1d? | 2017-06-23 | 2017-06-23 |  |  |  |  | 2017-06-23 | 2017-06-23 | 1d? | 2017-06-23 | 2017-06-23 | 陈伟民 [10%] | 0.8h |  |
| 200 | 18 | **软件进度计划与控制** |  | 75d | 2017-03-14 | 2017-06-24 |  | 73% | 20d | 2017-03-13 | 2017-03-14 | 2017-06-24 | 75d | 2017-03-12 | 2017-06-24 |  | 120h | 88h |
| 201 | 18.1 | 第三周组会 | manual | 1d | 2017-03-13 A | 2017-03-13 A |  | 100% |  |  | 2017-03-13 | 2017-03-13 | 1d | 2017-03-13 | 2017-03-13 | 曹进 [25%]; 陈伟民 [25%]; 付强 [25%]; 李恬霖 [25%] | 8h | 8h |
| 202 | 18.2 | 第四周组会 | manual | 1d | 2017-03-20 A | 2017-03-20 A |  | 100% |  |  | 2017-03-20 | 2017-03-20 | 1d | 2017-03-20 | 2017-03-20 | 曹进 [25%]; 陈伟民 [25%]; 付强 [25%]; 李恬霖 [25%] | 8h | 8h |
| 203 | 18.3 | 第五周组会 | manual | 1d | 2017-03-27 A | 2017-03-27 A |  | 100% |  |  | 2017-03-27 | 2017-03-27 | 1d | 2017-03-27 | 2017-03-27 | 陈伟民 [25%]; 付强 [25%]; 李恬霖 [25%]; 曹进 [25%] | 8h | 8h |
| 204 | 18.4 | 第六周组会 | manual | 1d | 2017-04-03 A | 2017-04-03 A |  | 100% |  |  | 2017-04-03 | 2017-04-03 | 1d | 2017-04-03 | 2017-04-03 | 陈伟民 [25%]; 付强 [25%]; 李恬霖 [25%]; 曹进 [25%] | 8h | 8h |
| 205 | 18.5 | 第七周组会 | manual | 1d | 2017-04-10 A | 2017-04-10 A |  | 100% |  |  | 2017-04-10 | 2017-04-10 | 1d | 2017-04-10 | 2017-04-10 | 陈伟民 [25%]; 付强 [25%]; 李恬霖 [25%]; 曹进 [25%] | 8h | 8h |
| 206 | 18.6 | 第八周组会 | manual | 1d | 2017-04-17 A | 2017-04-17 A |  | 100% |  |  | 2017-04-17 | 2017-04-17 | 1d | 2017-04-17 | 2017-04-17 | 曹进 [25%]; 陈伟民 [25%]; 付强 [25%]; 李恬霖 [25%] | 8h | 8h |
| 207 | 18.7 | 第九周组会 | manual | 1d | 2017-04-24 A | 2017-04-24 A |  | 100% |  |  | 2017-04-24 | 2017-04-24 | 1d | 2017-04-24 | 2017-04-24 | 曹进 [25%]; 陈伟民 [25%]; 付强 [25%]; 李恬霖 [25%] | 8h | 8h |
| 208 | 18.8 | 第十周组会 | manual | 1d | 2017-05-02 A | 2017-05-02 A |  | 100% |  |  | 2017-05-02 | 2017-05-02 | 1d | 2017-05-01 | 2017-05-01 | 曹进 [25%]; 陈伟民 [25%]; 付强 [25%]; 李恬霖 [25%] | 8h | 8h |
| 209 | 18.9 | 第十一周组会 | manual | 1d | 2017-05-08 A | 2017-05-08 A |  | 100% |  |  | 2017-05-08 | 2017-05-08 | 1d | 2017-05-08 | 2017-05-08 | 曹进 [25%]; 陈伟民 [25%]; 付强 [25%]; 李恬霖 [25%] | 8h | 8h |
| 210 | 18.10 | 第十二周组会 | manual | 1d | 2017-05-16 A | 2017-05-16 A |  | 100% |  |  | 2017-05-16 | 2017-05-16 | 1d | 2017-05-15 | 2017-05-15 | 曹进 [25%]; 陈伟民 [25%]; 付强 [25%]; 李恬霖 [25%] | 8h | 8h |
| 211 | 18.11 | 第十三周组会 | manual | 1d | 2017-05-22 A | 2017-05-22 A |  | 100% |  |  | 2017-05-22 | 2017-05-22 | 1d | 2017-05-22 | 2017-05-22 | 曹进 [25%]; 陈伟民 [25%]; 付强 [25%]; 李恬霖 [25%] | 8h | 8h |
| 212 | 18.12 | 第十四周组会 | manual | 1d | 2017-05-29 | 2017-05-29 |  |  |  |  | 2017-05-29 | 2017-05-29 | 1d | 2017-05-29 | 2017-05-29 | 曹进 [25%]; 陈伟民 [25%]; 付强 [25%]; 李恬霖 [25%] | 8h |  |
| 213 | 18.13 | 第十五周组会 | manual | 1d | 2017-06-05 | 2017-06-05 |  |  |  |  | 2017-06-05 | 2017-06-05 | 1d | 2017-06-05 | 2017-06-05 | 曹进 [25%]; 陈伟民 [25%]; 付强 [25%]; 李恬霖 [25%] | 8h |  |
| 214 | 18.14 | 第十六周组会 | manual | 1d | 2017-06-12 | 2017-06-12 |  |  |  |  | 2017-06-12 | 2017-06-12 | 1d | 2017-06-12 | 2017-06-12 | 曹进 [25%]; 陈伟民 [25%]; 付强 [25%]; 李恬霖 [25%] | 8h |  |
| 215 | 18.15 | 第十七周组会 | manual | 1d | 2017-06-19 | 2017-06-19 |  |  |  |  | 2017-06-19 | 2017-06-19 | 1d | 2017-06-19 | 2017-06-19 | 曹进 [25%]; 陈伟民 [25%]; 付强 [25%]; 李恬霖 [25%] | 8h |  |

| ID | WBS | Task | Type | Duration | Start | Finish | Complete | Remaining | Baseline start | Baseline finish | Baseline duration | Baseline 1 start | Baseline 1 finish | Resources | Work | Actual work |
| --- | --- | --- | --- | --- | --- | --- | --- | --- | --- | --- | --- | --- | --- | --- | --- | --- |
| 216 | 19 | **工作量估计与统计分析** |  | 75d | 2017-03-13 A | 2017-06-23 | 80% | 15d | 2017-03-13 | 2017-06-23 | 75d | 2017-03-13 | 2017-06-23 |  | 14.4h | 12h |
| 217 | 19.1 | 项目计划书拟定project计划 | manual | 5d | 2017-03-13 A | 2017-03-17 A | 100% |  | 2017-03-13 | 2017-03-17 | 5d | 2017-03-13 | 2017-03-17 | 曹进 [5%] | 2h | 2h |
| 218 | 19.2 | 项目需求编写project计划 | manual | 5d | 2017-03-20 A | 2017-03-24 A | 100% |  | 2017-03-20 | 2017-03-24 | 5d | 2017-03-20 | 2017-03-24 | 曹进 [2%] | 0.8h | 0.8h |
| 219 | 19.3 | 项目需求评审project计划 | manual | 5d | 2017-03-27 A | 2017-03-31 A | 100% |  | 2017-03-27 | 2017-03-31 | 5d | 2017-03-27 | 2017-03-31 | 曹进 [2%] | 0.8h | 0.8h |
| 220 | 19.4 | 项目需求修改project计划 | manual | 5d | 2017-04-03 A | 2017-04-07 A | 100% |  | 2017-04-03 | 2017-04-07 | 5d | 2017-04-03 | 2017-04-07 | 曹进 [2%] | 0.8h | 0.8h |
| 221 | 19.5 | 项目需求评审与修改project计划 | manual | 5d | 2017-04-10 A | 2017-04-14 A | 100% |  | 2017-04-10 | 2017-04-14 | 5d | 2017-04-10 | 2017-04-14 | 曹进 [2%] | 0.8h | 0.8h |
| 222 | 19.6 | 项目需求复评审project计划 | manual | 5d | 2017-04-17 A | 2017-04-21 A | 100% |  | 2017-04-17 | 2017-04-21 | 5d | 2017-04-17 | 2017-04-21 | 曹进 [2%] | 0.8h | 0.8h |
| 223 | 19.7 | 软件产品第一次改进作业project计划 | manual | 5d | 2017-04-24 A | 2017-04-28 A | 100% |  | 2017-04-24 | 2017-04-28 | 5d | 2017-04-24 | 2017-04-28 | 曹进 [2%] | 0.8h | 0.8h |
| 224 | 19.8 | 软件产品第二次改进作业project计划 | manual | 5d | 2017-05-01 A | 2017-05-05 A | 100% |  | 2017-05-01 | 2017-05-05 | 5d | 2017-05-01 | 2017-05-05 | 曹进 [2%] | 0.8h | 0.8h |
| 225 | 19.9 | 软件产品第三次改进作业project计划 | manual | 5d | 2017-05-08 A | 2017-05-12 A | 100% |  | 2017-05-08 | 2017-05-12 | 5d | 2017-05-08 | 2017-05-12 | 曹进 [5%] | 2h | 2h |
| 226 | 19.10 | 软件测试分析实验project计划 | manual | 5d | 2017-05-15 A | 2017-05-19 A | 100% |  | 2017-05-15 | 2017-05-19 | 5d | 2017-05-15 | 2017-05-19 | 曹进 [2%] | 0.8h | 0.8h |
| 227 | 19.11 | 软件测试评审实验project计划 | manual | 5d | 2017-05-22 A | 2017-05-26 A | 100% |  | 2017-05-22 | 2017-05-26 | 5d | 2017-05-22 | 2017-05-26 | 曹进 [2%] | 0.8h | 0.8h |
| 228 | 19.12 | 软件测试复评审实验project计划 | manual | 5d | 2017-05-29 A | 2017-06-02 A | 100% |  | 2017-05-29 | 2017-06-02 | 5d | 2017-05-29 | 2017-06-02 | 曹进 [2%] | 0.8h | 0.8h |
| 229 | 19.13 | 软件演示与测评实验project计划 | manual | 5d | 2017-06-05 | 2017-06-09 |  |  | 2017-06-05 | 2017-06-09 | 5d | 2017-06-05 | 2017-06-09 | 曹进 [2%] | 0.8h |  |
| 230 | 19.14 | 综合实验分析project计划 | manual | 5d | 2017-06-12 | 2017-06-16 |  |  | 2017-06-12 | 2017-06-16 | 5d | 2017-06-12 | 2017-06-16 | 曹进 [2%] | 0.8h |  |
| 231 | 19.15 | 综合实验总结project计划 | manual | 5d | 2017-06-19 | 2017-06-23 |  |  | 2017-06-19 | 2017-06-23 | 5d | 2017-06-19 | 2017-06-23 | 曹进 [2%] | 0.8h |  |
| 232 | 20 | **配置管理** |  | 75d | 2017-03-13 A | 2017-06-23 | 80% | 15d | 2017-03-13 | 2017-06-23 | 75d | 2017-03-13 | 2017-06-23 |  | 13.2h | 10.8h |
| 233 | 20.1 | 项目计划书拟定配置管理 | manual | 5d | 2017-03-13 A | 2017-03-17 A | 100% |  | 2017-03-13 | 2017-03-17 | 5d | 2017-03-13 | 2017-03-17 | 付强 [5%] | 2h | 2h |
| 234 | 20.2 | 项目需求编写配置管理 | manual | 5d | 2017-03-20 A | 2017-03-24 A | 100% |  | 2017-03-20 | 2017-03-24 | 5d | 2017-03-20 | 2017-03-24 | 付强 [2%] | 0.8h | 0.8h |
| 235 | 20.3 | 项目需求评审配置管理 | manual | 5d | 2017-03-27 A | 2017-03-31 A | 100% |  | 2017-03-27 | 2017-03-31 | 5d | 2017-03-27 | 2017-03-31 | 付强 [2%] | 0.8h | 0.8h |
| 236 | 20.4 | 项目需求修改配置管理 | manual | 5d | 2017-04-03 A | 2017-04-07 A | 100% |  | 2017-04-03 | 2017-04-07 | 5d | 2017-04-03 | 2017-04-07 | 付强 [2%] | 0.8h | 0.8h |
| 237 | 20.5 | 项目需求评审与修改配置管理 | manual | 5d | 2017-04-10 A | 2017-04-14 A | 100% |  | 2017-04-10 | 2017-04-14 | 5d | 2017-04-10 | 2017-04-14 | 付强 [2%] | 0.8h | 0.8h |
| 238 | 20.6 | 项目需求复评审配置管理 | manual | 5d | 2017-04-17 A | 2017-04-21 A | 100% |  | 2017-04-17 | 2017-04-21 | 5d | 2017-04-17 | 2017-04-21 | 付强 [2%] | 0.8h | 0.8h |
| 239 | 20.7 | 软件产品第一次改进配置管理 | manual | 5d | 2017-04-24 A | 2017-04-28 A | 100% |  | 2017-04-24 | 2017-04-28 | 5d | 2017-04-24 | 2017-04-28 | 付强 [2%] | 0.8h | 0.8h |
| 240 | 20.8 | 软件产品第二次改进配置管理 | manual | 5d | 2017-05-01 A | 2017-05-05 A | 100% |  | 2017-05-01 | 2017-05-05 | 5d | 2017-05-01 | 2017-05-05 | 付强 [2%] | 0.8h | 0.8h |
| 241 | 20.9 | 软件产品第三次改进配置管理 | manual | 5d | 2017-05-08 A | 2017-05-12 A | 100% |  | 2017-05-08 | 2017-05-12 | 5d | 2017-05-08 | 2017-05-12 | 付强 [2%] | 0.8h | 0.8h |
| 242 | 20.10 | 软件测试分析实验配置管理 | manual | 5d | 2017-05-15 A | 2017-05-19 A | 100% |  | 2017-05-15 | 2017-05-19 | 5d | 2017-05-15 | 2017-05-19 | 付强 [2%] | 0.8h | 0.8h |
| 243 | 20.11 | 软件测试评审实验配置管理 | manual | 5d | 2017-05-22 A | 2017-05-26 A | 100% |  | 2017-05-22 | 2017-05-26 | 5d | 2017-05-22 | 2017-05-26 | 付强 [2%] | 0.8h | 0.8h |
| 244 | 20.12 | 软件测试复评审实验配置管理 | manual | 5d | 2017-05-29 A | 2017-06-02 A | 100% |  | 2017-05-29 | 2017-06-02 | 5d | 2017-05-29 | 2017-06-02 | 付强 [2%] | 0.8h | 0.8h |
| 245 | 20.13 | 软件演示与测评实验配置管理 | manual | 5d | 2017-06-05 | 2017-06-09 |  |  | 2017-06-05 | 2017-06-09 | 5d | 2017-06-05 | 2017-06-09 | 付强 [2%] | 0.8h |  |
| 246 | 20.14 | 综合实验分析配置管理 | manual | 5d | 2017-06-12 | 2017-06-16 |  |  | 2017-06-12 | 2017-06-16 | 5d | 2017-06-12 | 2017-06-16 | 付强 [2%] | 0.8h |  |
| 247 | 20.15 | 综合实验总结配置管理 | manual | 5d | 2017-06-19 | 2017-06-23 |  |  | 2017-06-19 | 2017-06-23 | 5d | 2017-06-19 | 2017-06-23 | 付强 [2%] | 0.8h |  |
